# Gantt_General_Proyecto

Schedule from MS Project, 2024-08-12 to 2024-12-06, A marks actual dates.

## Calendars

- Estándar: Mon-Fri 09:00-13:00, 15:00-19:00; Sat-Sun off.

## Resources

| Resource |
| --- |
| Alvaro Arenas |

## Schedule

| ID | WBS | Task | Type | Duration | Start | Finish | Predecessors | Complete | Remaining | Total slack |
| --- | --- | --- | --- | --- | --- | --- | --- | --- | --- | --- |
| 1 | 1 | **Sprint 1** |  | 20d | 2024-08-12 A | 2024-09-06 A |  | 100% |  |  |
| 2 | 1.1 | **Análisis y estudio de problemática** |  | 20d | 2024-08-12 A | 2024-09-06 A |  | 100% |  |  |
| 3 | 1.1.1 | Generar carta gantt |  | 1d | 2024-08-12 A | 2024-08-12 A |  | 100% |  |  |
| 4 | 1.1.2 | Generar alcances del proyecto |  | 1d | 2024-08-13 A | 2024-08-13 A | 3 | 100% |  |  |
| 5 | 1.1.3 | Generar presentación comercial |  | 5d | 2024-08-14 A | 2024-08-20 A | 4 | 100% |  |  |
| 6 | 1.1.4 | Actualizar carta gantt |  | 1d | 2024-08-21 A | 2024-08-21 A | 5 | 100% |  |  |
| 7 | 1.1.5 | Generar diagramas para el sistema |  | 11d | 2024-08-22 A | 2024-09-05 A | 6 | 100% |  |  |
| 8 | 1.1.6 | Generar presentación con gestión del proyecto |  | 1d | 2024-09-06 A | 2024-09-06 A | 7 | 100% |  |  |
| 9 | 1.2 | Entrega fase 1 (Presentación + KickOff APT) | milestone | 0d | 2024-09-06 A | 2024-09-06 A | 8 | 100% |  |  |
| 10 | 2 | **Sprint 2** |  | 15d | 2024-09-09 A | 2024-09-27 A | 1 | 100% |  |  |
| 11 | 2.1 | **Establecer plataformas de gestión** |  | 5d | 2024-09-09 A | 2024-09-16 A | 2 | 100% |  |  |
| 12 | 2.1.1 | Elegir herramienta de gestión |  | 1d | 2024-09-09 A | 2024-09-09 A |  | 100% |  |  |
| 13 | 2.1.2 | Configurar herramienta de gestión |  | 4d | 2024-09-10 A | 2024-09-13 A | 12 | 100% |  |  |
| 14 | 2.1.3 | Roadmap configurado / Gestión de proyecto | milestone | 0d | 2024-09-16 A | 2024-09-16 A | 13 | 100% |  |  |
| 15 | 2.2 | **Infraestructura** |  | 10d | 2024-09-16 A | 2024-09-27 A | 11 | 100% |  |  |
| 16 | 2.2.1 | **Como administrador, necesito un servidor al cual acceder y en el cual instalar el software necesario para el funcionamiento del sistema** |  | 5d | 2024-09-16 A | 2024-09-20 A |  | 100% |  |  |
| 17 | 2.2.1.1 | Seleccionar tipo de servidor (on-premise o cloud) |  | 1d | 2024-09-16 A | 2024-09-16 A |  | 100% |  |  |
| 18 | 2.2.1.2 | Aplicar los diseños de arquitectura del software |  | 4d | 2024-09-17 A | 2024-09-20 A | 17 | 100% |  |  |
| 19 | 2.2.2 | **Como desarrollador, necesito acceder a entornos de desarrollo y de producción** |  | 5d | 2024-09-23 A | 2024-09-27 A | 16 | 100% |  |  |
| 20 | 2.2.2.1 | Crear pipelines automatizados para cambiar de entorno |  | 3d | 2024-09-23 A | 2024-09-25 A |  | 100% |  |  |
| 21 | 2.2.2.2 | Crear sistema de pasos a producción mediante releases |  | 2d | 2024-09-26 A | 2024-09-27 A | 20 | 100% |  |  |
| 22 | 2.2.3 | Servidores operativos | milestone | 0d | 2024-09-27 A | 2024-09-27 A | 19 | 100% |  |  |
| 23 | 3 | **Sprint 3** |  | 15d | 2024-09-30 A | 2024-10-18 | 10 | 33% | 10d | 0d |
| 24 | 3.1 | **Base de datos** |  | 15d | 2024-09-30 A | 2024-10-18 | 15 | 33% | 10d | 0d |
| 25 | 3.1.1 | **Como desarrollador, necesito acceder a una base de datos que me permita almacenar los datos de la API** |  | 5d | 2024-09-30 A | 2024-10-04 A |  | 100% |  |  |
| 26 | 3.1.1.1 | Seleccionar un motor de base de datos |  | 1d | 2024-09-30 A | 2024-09-30 A |  | 100% |  |  |
| 27 | 3.1.1.2 | Instalar motor de base de datos y crear accesos y usuarios con permisos |  | 1d | 2024-10-01 A | 2024-10-01 A | 26 | 100% |  |  |
| 28 | 3.1.1.3 | Aplicar el modelo MER para crear la base de datos |  | 3d | 2024-10-02 A | 2024-10-04 A | 27 | 100% |  |  |

| ID | WBS | Task | Type | Duration | Start | Finish | Predecessors | Total slack |
| --- | --- | --- | --- | --- | --- | --- | --- | --- |
| 29 | 3.1.2 | **Como científico de datos, necesito acceder a una base de datos normalizada y pensada para este proceso** |  | 10d | 2024-10-07 | 2024-10-18 | 25 | 0d |
| 30 | 3.1.2.1 | Generar acceso y usuario para leer los datos |  | 1d | 2024-10-07 | 2024-10-07 |  | 0d |
| 31 | 3.1.2.2 | Generar ETL para adquisición de datos de entrenamiento |  | 9d | 2024-10-08 | 2024-10-18 | 30 | 0d |
| 32 | 3.1.3 | Base de datos operativa | milestone | 0d | 2024-10-18 | 2024-10-18 | 29 | 0d |
| 33 | 4 | **Sprint 4** |  | 25d | 2024-10-21 | 2024-11-22 | 23 | 0d |
| 34 | 4.1 | **Procesamiento y análisis de datos** |  | 15d | 2024-10-21 | 2024-11-08 |  | 0d |
| 35 | 4.1.1 | **Como científico de datos, necesito herramientas para explorar y analizar los datos adquiridos, y posteriormente generar un modelo predictivo adecuado** |  | 15d | 2024-10-21 | 2024-11-08 |  | 0d |
| 36 | 4.1.1.1 | Levantar ambiente jupyter lab |  | 0.5d | 2024-10-21 | 2024-10-21 |  | 0d |
| 37 | 4.1.1.2 | Generar credenciales para el ambiente |  | 0.5d | 2024-10-21 | 2024-10-21 | 36 | 0d |
| 38 | 4.1.1.3 | Realizar análisis de datos |  | 10d | 2024-10-22 | 2024-11-04 | 37 | 0d |
| 39 | 4.1.1.4 | Generar cluster |  | 2d | 2024-11-05 | 2024-11-06 | 38 | 0d |
| 40 | 4.1.1.5 | Generar modelo predictivo |  | 2d | 2024-11-07 | 2024-11-08 | 39 | 0d |
| 41 | 4.1.2 | Modelo(s) predictivo(s) | milestone | 0d | 2024-11-08 | 2024-11-08 | 35 | 0d |
| 42 | 4.2 | **Motor de recomendación (API)** |  | 15d | 2024-10-21 | 2024-11-08 |  | 0d |
| 43 | 4.2.1 | Instalar dependencias de la API en Python |  | 2d | 2024-10-21 | 2024-10-22 |  | 0d |
| 44 | 4.2.2 | Generar endpoints para respuesta de predicción |  | 10d | 2024-10-23 | 2024-11-05 | 43 | 0d |
| 45 | 4.2.3 | Almacenar los datos de cada solicitud |  | 3d | 2024-11-06 | 2024-11-08 | 44 | 0d |
| 46 | 4.2.4 | API operativa | milestone | 0d | 2024-11-08 | 2024-11-08 | 45 | 0d |
| 47 | 4.3 | **Automatizar el análisis de datos y empaquetarlo** |  | 10d | 2024-11-11 | 2024-11-22 | 34, 42 | 0d |
| 48 | 4.3.1 | **Como dueño de un negocio, necesito tener un plugin que sea de fácil uso para integrar en mi página de eCommerce sin grandes conocimientos ténicos** |  | 10d | 2024-11-11 | 2024-11-22 |  | 0d |
| 49 | 4.3.1.1 | Estandarizar el análisis de datos y los reentrenamientos |  | 8d | 2024-11-11 | 2024-11-20 |  | 0d |
| 50 | 4.3.1.2 | Estandarizar código de la API para que su uso pueda adaptarse |  | 8d | 2024-11-11 | 2024-11-20 |  | 0d |
| 51 | 4.3.1.3 | Empaquetar el código y el análisis de datos en un plugin |  | 2d | 2024-11-21 | 2024-11-22 | 49, 50 | 0d |
| 52 | 4.3.2 | Plugin woocommerce | milestone | 0d | 2024-11-22 | 2024-11-22 | 48 | 0d |

| ID | WBS | Task | Type | Duration | Start | Finish | Predecessors | Total slack |
| --- | --- | --- | --- | --- | --- | --- | --- | --- |
| 53 | 5 | **Sprint 5** |  | 10d | 2024-11-25 | 2024-12-06 |  | 0d |
| 54 | 5.1 | **Marcha blanca y pilotaje** |  | 10d | 2024-11-25 | 2024-12-06 | 47 | 0d |
| 55 | 5.1.1 | **Como dueño de un negocio, necesito alta operabilidad y bajo porcentaje de errores, así como confianza en que funciona** |  | 10d | 2024-11-25 | 2024-12-06 |  | 0d |
| 56 | 5.1.1.1 | Integrar plugin en algunas páginas y monitorearlo activamente |  | 10d | 2024-11-25 | 2024-12-06 |  | 0d |
| 57 | 5.1.1.2 | Generar una página de demo para utilizar y revisar feedback inmediato |  | 10d | 2024-11-25 | 2024-12-06 |  | 0d |
| 58 | 5.1.2 | Entregable fase 3 (Test plans y plugin marcha blanca) | milestone | 0d | 2024-12-06 | 2024-12-06 | 57 | 0d |
